# process_1

Schedule from ProjectLibre, 2026-05-25 to 2026-07-24.

## Calendars

- Пятидневка: Mon-Fri 08:00-12:00, 13:00-17:00; Sat-Sun off.

## Resources

| Resource | Rate |
| --- | --- |
| Не назначено |  |
| Руководитель проекта (PM) | 2500 |
| Старший Бизнес-аналитик | 1800 |
| Архитектор систем | 2200 |
| Ведущий разработчик (Backend) | 2000 |
| Разработчик интерфейсов (Frontend) | 1700 |
| Инженер по тестированию (QA) | 1300 |

## Schedule

| ID | WBS | Task | Duration | Start | Finish | Predecessors | Baseline start | Baseline finish | Resources |
| --- | --- | --- | --- | --- | --- | --- | --- | --- | --- |
| 1 | 1 | **КОРПОРАТИВНАЯ СИСТЕМА (БАЗОВЫЙ ЭТАП)** | 27d | 2026-05-25 | 2026-06-30 |  | 2026-05-25 | 2026-07-01 |  |
| 2 | 1.1 | **Управление и инициация** | 3d | 2026-05-25 | 2026-05-27 |  | 2026-05-25 | 2026-05-28 |  |
| 3 | 1.1.1 | Разработка и утверждение Устава проекта | 2d | 2026-05-25 | 2026-05-26 |  | 2026-05-25 | 2026-05-26 | Руководитель проекта (PM) |
| 4 | 1.1.2 | Проведение установочного совещания (Kick-off) | 1d | 2026-05-27 | 2026-05-27 | 3 | 2026-05-27 | 2026-05-28 | Руководитель проекта (PM); Старший Бизнес-аналитик |
| 5 | 1.1.3 | Веха: Проект официально запущен | 0d | 2026-05-27 | 2026-05-27 | 4 | 2026-05-28 | 2026-05-28 |  |
| 6 | 1.2 | **Аналитика и проектирование (ТЗ)** | 9d | 2026-05-28 | 2026-06-09 |  | 2026-05-29 | 2026-06-10 |  |
| 7 | 1.2.1 | Проведение интервью с ключевыми пользователями | 3d | 2026-05-28 | 2026-06-01 | 5 | 2026-05-29 | 2026-06-02 | Старший Бизнес-аналитик |
| 8 | 1.2.2 | Формирование требований и написание ТЗ | 4d | 2026-06-02 | 2026-06-05 | 7 | 2026-06-03 | 2026-06-08 | Старший Бизнес-аналитик |
| 9 | 1.2.3 | Согласование ТЗ с Заказчиком (Итерация 1) | 2d | 2026-06-08 | 2026-06-09 | 8 | 2026-06-09 | 2026-06-10 | Руководитель проекта (PM) |
| 10 | 1.2.4 | Веха: Техническое задание утверждено | 0d | 2026-06-09 | 2026-06-09 | 9 | 2026-06-10 | 2026-06-10 |  |
| 11 | 1.3 | **Разработка базового функционала** | 9d | 2026-06-10 | 2026-06-22 |  | 2026-06-11 | 2026-06-23 |  |
| 12 | 1.3.1 | Проектирование архитектуры и схемы БД | 3d | 2026-06-10 | 2026-06-12 | 10 | 2026-06-11 | 2026-06-15 | Архитектор систем |
| 13 | 1.3.2 | Разработка серверной логики и API ядра | 6d | 2026-06-15 | 2026-06-22 | 12 | 2026-06-16 | 2026-06-23 | Ведущий разработчик (Backend) |
| 14 | 1.3.3 | Верстка базового пользовательского интерфейса | 4d | 2026-06-15 | 2026-06-18 | 12 | 2026-06-16 | 2026-06-19 | Разработчик интерфейсов (Frontend) |
| 15 | 1.4 | **Тестирование и Стабилизация ядра** | 15d | 2026-06-10 | 2026-06-30 |  | 2026-06-11 | 2026-07-01 |  |
| 16 | 1.4.1 | Разработка тест-кейсов и сценариев | 2d | 2026-06-10 | 2026-06-11 | 10 | 2026-06-11 | 2026-06-12 | Инженер по тестированию (QA) |
| 17 | 1.4.2 | Функциональное тестирование системы | 4d | 2026-06-23 | 2026-06-26 | 13, 14 | 2026-06-24 | 2026-06-29 | Инженер по тестированию (QA) |
| 18 | 1.4.3 | Исправление дефектов (Bugfixing) | 2d | 2026-06-29 | 2026-06-30 | 17 | 2026-06-30 | 2026-07-01 | Ведущий разработчик (Backend) |
| 19 | 1.4.4 | Веха: Базовая система стабилизирована | 0d | 2026-06-30 | 2026-06-30 | 18 |  |  |  |
| 20 | 2 | **УПРАВЛЕНИЕ ИЗМЕНЕНИЯМИ: МОДУЛЬ ОТЧЕТНОСТИ (CR-001)** | 18d | 2026-07-01 | 2026-07-24 |  |  |  |  |
| 21 | 2.1 | Анализ влияния запроса (Impact Analysis) и оценка рисков | 1d | 2026-07-01 | 2026-07-01 | 19 |  |  | Руководитель проекта (PM); Старший Бизнес-аналитик |
| 22 | 2.2 | Заседание Управляющего комитета и подписание Доп. соглашения | 1d | 2026-07-02 | 2026-07-02 | 21 |  |  | Руководитель проекта (PM) |
| 23 | 2.3 | Проектирование структуры данных и витрин отчетов | 3d | 2026-07-03 | 2026-07-07 | 22 |  |  | Архитектор систем |
| 24 | 2.4 | Разработка ETL-скриптов агрегации данных | 4d | 2026-07-08 | 2026-07-13 | 23 |  |  | Ведущий разработчик (Backend) |
| 25 | 2.5 | Программирование макетов отчетов и экспорта в Excel/PDF | 4d | 2026-07-14 | 2026-07-17 | 24 |  |  | Разработчик интерфейсов (Frontend) |
| 26 | 2.6 | Комплексное интеграционное тестирование отчетности | 4d | 2026-07-20 | 2026-07-23 | 25 |  |  | Инженер по тестированию (QA) |
| 27 | 2.7 | Приемо-сдаточные испытания (ПСИ) всей системы | 1d | 2026-07-24 | 2026-07-24 | 26 |  |  | Руководитель проекта (PM); Инженер по тестированию (QA) |
| 28 | 2.8 | Веха: Проект завершен с учетом CR-001 (Финиш) | 0d | 2026-07-24 | 2026-07-24 | 27 |  |  |  |
